# MobiTown_Schedule_Detail_21122009

How a schedule from MS Project changed from version to version. A marks actual dates.

## Version 1 (saved 2010-04-13)

| ID | WBS | Task | Duration | Start | Finish | Predecessors | Complete | Total float | Constraint |
| --- | --- | --- | --- | --- | --- | --- | --- | --- | --- |
| 1 | 1 | **Quick Quick - ERP** | 43d? | 2010-04-01 A | 2010-05-31 |  | 15% | 0d |  |
| 2 | 1.1 | **Khảo sát yêu cầu - Phân tích** | 11d? | 2010-04-01 A | 2010-04-15 |  | 73% | 25d |  |
| 3 |  | Thu thập thông tin, tổng hợp nhu cầu quản lý | 6d? | 2010-04-01 A | 2010-04-08 A |  | 100% |  | start no earlier than 2010-04-01 |
| 4 |  | Định hình yêu cầu - Xây dựng giải pháp | 5d? | 2010-04-09 A | 2010-04-15 | 3 | 40% | 25d | start no earlier than 2010-04-09 |
| 5 | 1.2 | **Thiết kế tài liệu hệ thống** | 6d? | 2010-04-16 | 2010-04-23 | 4 |  | 25d |  |
| 6 |  | Review chức năng, giải pháp hệ thống | 2d? | 2010-04-16 | 2010-04-19 |  |  | 25d | start no earlier than 2010-04-16 |
| 7 |  | Thiết kế mô hình database | 4d? | 2010-04-20 | 2010-04-23 | 6 |  | 25d | start no earlier than 2010-04-20 |
| 8 | 1.3 | **Xây dựng khung phát triễn phần mềm** | 17d? | 2010-04-01 A | 2010-04-23 |  | 77% | 26d |  |
| 9 |  | Thiết kế cấu trúc hướng đối tượng (customize Zend, Extjs framework) | 11d? | 2010-04-01 A | 2010-04-15 A |  | 100% |  | finish no earlier than 2010-04-15 |
| 10 |  | Xây dựng module phân quyền người dùng | 3d | 2010-04-16 A | 2010-04-20 | 9 | 40% | 25.9d | start no earlier than 2010-04-16 |
| 11 |  | Xây dựng module hỗ trợ đa ngôn ngữ | 3d? | 2010-04-21 A | 2010-04-23 | 10 | 30% | 25d | start no earlier than 2010-04-21 |
| 12 | 1.4 | **Phát triễn phần mềm** | 20d? | 2010-04-26 | 2010-05-21 |  |  | 5d |  |
| 13 | 1.4.1 | **Xây dựng module Bán hàng (Sale)** | 20d? | 2010-04-26 | 2010-05-21 |  |  | 5d |  |
| 14 |  | {Kế hoạch chi tiết module} | 20d? | 2010-04-26 | 2010-05-21 |  |  | 5d | finish no earlier than 2010-05-21 |
| 15 | 1.4.2 | **Xây dựng module Mua hàng (Purchase)** | 20d? | 2010-04-26 | 2010-05-21 |  |  | 5d |  |
| 16 |  | {Kế hoạch chi tiết module} | 20d? | 2010-04-26 | 2010-05-21 |  |  | 5d | finish no earlier than 2010-05-21 |
| 17 | 1.4.3 | **Xây dựng module Kho (Inventory)** | 20d? | 2010-04-26 | 2010-05-21 |  |  | 5d |  |
| 18 |  | {Kế hoạch chi tiết module} | 20d? | 2010-04-26 | 2010-05-21 |  |  | 5d | finish no earlier than 2010-05-21 |
| 19 | 1.4.4 | **Xây dựng module Kế toán (Accountant)** | 20d? | 2010-04-26 | 2010-05-21 |  |  | 5d |  |
| 20 |  | {Kế hoạch chi tiết module} | 20d? | 2010-04-26 | 2010-05-21 |  |  | 5d | finish no earlier than 2010-05-21 |
| 21 |  | Test tổng hợp | 20d? | 2010-04-26 | 2010-05-21 |  |  | 1d | finish no earlier than 2010-05-21 |
| 22 |  | Release | 2d | 2010-05-24 | 2010-05-25 | 21 |  | 1d | finish no earlier than 2010-05-25 |
| 23 |  | Thời gian dự trữ | 3d | 2010-05-27 | 2010-05-31 | 22 |  | 0d | finish no earlier than 2010-05-31 |

## Version 2 (saved 2010-04-14)

Last finish stays 2010-05-31.

Changed:

| ID | Task | Other |
| --- | --- | --- |
| 9 | Thiết kế cấu trúc hướng đối tượng (customize Zend, ExtJS framework) | was named Thiết kế cấu trúc hướng đối tượng (customize Zend, Extjs framework) |
